# CCO_OY4_eCoachingLog_Schedule

Schedule from MS Project, 2016-06-01 to 2024-02-13.
Verizon Business

## Calendars

- Standard: Mon-Fri 08:00-12:00, 13:00-17:00; Sat-Sun off. Exceptions (off unless hours are given): 2016-07-04 (2016 Independence Day), 2016-09-05 (2016 Labor Day), 2016-11-24 (2016 Thanksgiving Day), 2016-11-25 (2016 Thanksgiving Dat After), 2016-12-26 (2016 Christmas Day), 2017-01-02 (2017 New Years Day), 2017-05-29 (2017 Memorial Day), 2017-07-04 (2017 Independence Day), 2017-09-04 (2017 Labor Day), 2017-11-23 (2017 Thanksgiving Day), 2017-11-24 (2017 Thanksgiving Day After), 2017-12-25 (2017 Christmas Day), 2018-01-01 (2018 New Years Day), 2018-05-28 (2018 Memorial Day), 2018-07-04 (2018 Independence Day), 2018-09-03 (2018 Labor Day), 2018-11-22 (2018 Thanksgiving Day), 2018-11-23 (2018 Thanksgiving Day After), 2018-12-25 (2018 Christmas Day), 2019-01-01 (2019 New Years Day), 2019-05-27 (2019 Memorial Day), 2019-07-04 (2019 Independence Day), 2019-09-02 (2019 Labor Day), 2019-11-28 (2019 Thanksgiving Day), 2019-11-29 (2019 Thanksgiving Day After), 2019-12-25 (2019 Christmas Day), 2020-01-01 (2020 New Years Day), 2020-05-25 (2020 Memorial Day), 2020-07-03 (2020 Independence Day), 2020-09-07 (2020 Labor Day), 2020-11-26 (2020 Thanksgiving Day), 2020-11-27 (2020 Thanksgiving Day After), 2020-12-25 (2020 Christmas Day).

## Resources

| Resource | Group | Rate |
| --- | --- | --- |
| Keith Luegering |  |  |
| Geils; Dean | W282304 - HCS_HS_CO_FHA-CDC | 88.61 |
| Palacherla; Susmitha C | W282305 - HCS_HS_CO_Health Engineering |  |
| Queen; Timothy K | W282305 - HCS_HS_CO_Health Engineering |  |
| Leferink; William J | W282305 - HCS_HS_CO_Health Engineering |  |
| Augustin; Jourdain M | W282304 - HCS_HS_CO_FHA-CDC |  |
| Foster; Mark S | W282318 - HCS_HS_CL_CCO Ops-Call-Ctr |  |
| Hinman; David L | W282305 - HCS_HS_CO_Health Engineering |  |
| Coughlin; Brian E | W282305 - HCS_HS_CO_Health Engineering |  |
| Tiongson; John Eric Z (NONUS) | W282318 - HCS_HS_CL_CCO Ops-Call-Ctr |  |
| Stearns; Douglas R | W282305 - HCS_HS_CO_Health Engineering |  |
| Szabo; Brian P | W282305 - HCS_HS_CO_Health Engineering |  |
| Black; Karen S | W282984 - HCS_HS_DC_Health_Operations |  |
| Haltmeyer; Jacqueline K | W282305 - HCS_HS_CO_Health Engineering |  |
| Treinen; Lola R | W282305 - HCS_HS_CO_Health Engineering | 93.79 |
| Project Manager |  |  |
| Process Auditor |  |  |
| HCSD Engineering Steering Committee |  |  |
| HCSD Process Engineering & Governance |  |  |
| Analyst |  |  |
| Architect |  |  |
| Developer |  |  |
| Stakeholder |  |  |
| Tester |  |  |
| Program Manager |  |  |
| Information System Security Officer |  |  |
| Configuration Management Lead |  |  |
| Configuration Control Board |  |  |
| Chief Information Security Officer |  |  |
| Customer |  |  |
| Team Member |  |  |
| Supplier Acquisition Manager |  |  |
| Reviewer |  |  |
| Peer Review Moderator |  |  |
| Huang; Lili | W282304 - HCS_HS_CO_FHA-CDC |  |
| Miller; Jackie K | W282305 - HCS_HS_CO_Health Engineering |  |
| Ingram Michael T | W282304 - HCS_HS_CO_FHA-CDC |  |
| Ingram Michael T |  |  |

## Schedule

| ID | WBS | Task | Type | Duration | Start | Finish | Predecessors | Total slack | Free slack | Constraint | Resources | Work | Text8 |
| --- | --- | --- | --- | --- | --- | --- | --- | --- | --- | --- | --- | --- | --- |
| 1 | 0 | **eCoaching Log - OY4** |  | 1977d? | 2016-06-01 | 2024-02-13 |  |  |  |  |  | 137127h |  |
| 2 | 1.1 | **APL Maintenance Lifecycle** |  | 283d? | 2016-06-01 | 2017-07-12 |  |  |  |  |  | 137127h |  |
| 3 | 1.1.1 | **Maintenance Phase Iteration** |  | 283d? | 2016-06-01 | 2017-07-12 |  |  |  |  |  | 137127h |  |
| 4 | 1.1.1.1 | **Plan and Manage Iteration** |  | 254d | 2016-06-01 | 2017-05-31 |  | 0d |  |  |  | 44164.8h |  |
| 5 | 1.1.1.1.1 | Plan Project | manual | 37d | 2016-06-01 | 2016-07-22 |  |  |  | start no earlier than 2016-06-01 | Stearns; Douglas R; Tiongson; John Eric Z (NONUS); Huang; Lili; Palacherla; Susmitha C; Ingram Michael T | 1224h | Version Manager Setup |
| 6 | 1.1.1.1.2 | Plan Iteration |  | 35.7d | 2016-06-01 | 2016-07-21 |  | 1941.3d |  | start no earlier than 2016-06-01 | Tiongson; John Eric Z (NONUS); Stearns; Douglas R; Ingram Michael T; Huang; Lili; Palacherla; Susmitha C | 1142.4h |  |
| 7 | 1.1.1.1.3 | Plan for Security Management |  | 120.8h | 2016-06-30 | 2016-07-22 |  | 1940d |  | finish no earlier than 2016-07-22 | Tiongson; John Eric Z (NONUS); Ingram Michael T; Huang; Lili; Palacherla; Susmitha C; Stearns; Douglas R | 584h |  |
| 8 | 1.1.1.1.4 | Plan Configuration Management |  | 17.49d | 2016-06-28 | 2016-07-22 |  | 1940d |  | finish no earlier than 2016-07-22 | Huang; Lili; Ingram Michael T; Tiongson; John Eric Z (NONUS); Palacherla; Susmitha C; Stearns; Douglas R | 534.4h |  |
| 9 | 1.1.1.1.5 | Create Baseline |  | 4d | 2016-09-06 | 2016-09-09 |  | 1906d |  | start no earlier than 2016-09-06 | Miller; Jackie K | 40h |  |
| 10 | 1.1.1.1.6 | Manage Iterations | manual | 254d | 2016-06-01 | 2017-05-31 |  |  |  | start no earlier than 2016-06-01 | Stearns; Douglas R; Tiongson; John Eric Z (NONUS); Ingram Michael T; Huang; Lili; Palacherla; Susmitha C | 10160h |  |
| 11 | 1.1.1.1.7 | Understand and Communicate Project Performance | manual | 254d | 2016-06-01 | 2017-05-31 |  |  |  | start no earlier than 2016-06-01 | Ingram Michael T; Tiongson; John Eric Z (NONUS); Huang; Lili; Palacherla; Susmitha C; Stearns; Douglas R | 10160h |  |
| 12 | 1.1.1.1.8 | Decision Analysis and Resolution | manual | 254d | 2016-06-01 | 2017-05-31 |  |  |  | start no earlier than 2016-06-01 | Ingram Michael T; Huang; Lili; Tiongson; John Eric Z (NONUS); Palacherla; Susmitha C; Stearns; Douglas R | 10160h |  |
| 13 | 1.1.1.1.9 | Assess Results | manual | 254d | 2016-06-01 | 2017-05-31 |  |  |  | start no earlier than 2016-06-01 | Stearns; Douglas R; Tiongson; John Eric Z (NONUS); Ingram Michael T; Huang; Lili; Palacherla; Susmitha C | 10160h |  |
| 14 | 1.1.1.2 | **Governance** |  | 47d | 2016-06-01 | 2016-08-05 |  | 1930d |  |  |  | 74h |  |
| 15 | 1.1.1.2.1 | Project Plan Review |  | 15d | 2016-06-10 | 2016-06-30 |  | 1945d | 15d | finish no earlier than 2016-06-30 | Black; Karen S [6.7%] | 8h |  |
| 16 | 1.1.1.2.2 | APL Process Audit |  | 10d | 2016-07-25 | 2016-08-05 | 15 | 1930d |  | finish no earlier than 2016-08-05 | Black; Karen S [32.5%] | 26h |  |
| 17 | 1.1.1.2.3 | Baseline Audit |  | 3d | 2016-06-01 | 2016-06-03 |  | 1974d |  | start no earlier than 2009-09-14 | Black; Karen S | 40h |  |
| 18 | 1.1.1.3 | **Maintenance Iteration 1** |  | 65d | 2016-06-01 | 2016-08-31 |  | 0d |  |  |  | 19856h |  |
| 19 | 1.1.1.3.1 | **Identify and Refine Requirements** |  | 65d | 2016-06-01 | 2016-08-31 |  | 0d |  |  |  | 5504h |  |
| 20 | 1.1.1.3.1.1 | Identify and Outline Requirements | manual | 31d | 2016-06-01 | 2016-08-31 |  |  |  | start no earlier than 2016-06-01 | Stearns; Douglas R; Tiongson; John Eric Z (NONUS); Huang; Lili; Palacherla; Susmitha C | 992h |  |
| 21 | 1.1.1.3.1.2 | Detail System-Wide Requirements | manual | 31d | 2016-06-01 | 2016-08-31 |  |  |  | start no earlier than 2016-06-01 | Stearns; Douglas R; Tiongson; John Eric Z (NONUS); Huang; Lili | 744h |  |
| 22 | 1.1.1.3.1.3 | Create, Review/Update Security Requirements | manual | 65d | 2016-06-01 | 2016-08-31 |  |  |  | start no earlier than 2016-06-01 | Stearns; Douglas R; Tiongson; John Eric Z (NONUS); Ingram Michael T; Huang; Lili; Szabo; Brian P; Palacherla; Susmitha C | 1760h |  |
| 23 | 1.1.1.3.1.4 | Create Test Cases | manual | 31d | 2016-06-01 | 2016-08-31 |  |  |  | start no earlier than 2016-06-01 | Stearns; Douglas R; Huang; Lili; Palacherla; Susmitha C | 744h |  |
| 24 | 1.1.1.3.1.5 | Review Test Activities for Security | manual | 65d | 2016-06-01 | 2016-08-31 |  |  |  | start no earlier than 2016-06-01 | Tiongson; John Eric Z (NONUS); Stearns; Douglas R; Ingram Michael T; Szabo; Brian P | 1264h |  |

Notes:
- 2: Text7: Evolve to continuously obtain feedback and improve, Iteration Lifecycle
- 4: Text1: Configuration Management Plan Standard, Risk Register Standard, Work Items List Standard, Work Items List, [Technical Specification], Risk Register, Iteration Plan, Configuration Management Plan, [Meeting and Review Records] / Text4: Application Security Risk & Requirements, Application Threat Modeling, Current Internal And External Security Policies, Standards And Procedures , Security Certification, Applications Service Providers Response for Security Requirements , Project Plan
- 5: A collaborative task that outlines an initial agreement on how the project will achieve its goals. The resulting project plan provides a summary-level overview of the project. / Text2: Project Plan Standard, Work Items List Standard, [Customer Requirements], APL Compliant Policy, Measurement Definitions Standard, Risk Register Standard, Work Items List, Work Breakdown Structure, [Process Assets], [Project Risk] / Text3: Project Plan, [Meeting and Review Records], Tailoring and Planning Worksheet, Work Items List, Process Waiver, Work Breakdown Structure, Life Cycle Selection, Traceability Matrix, Test Plan (optional), Measurement Definitions, Risk Register / Text7: Phase Milestones, Staffing a Project, Forming Teams, Deploy the Solution, Standard Work Environment, , Risk Management Guide, Process Automation Lab, Tool Request Process, Current Tool Licenses, Tools Administrators, Tools Support Model, Subversion Setup
- 6: Plan the scope and responsibilities for a single iteration. / Text2: Risk Register Standard, Work Items List Standard, [Customer Requirements], [Project Risk], [Project Plan], [Project Work], Test Plan (optional), APL Compliant Policy, [Technical Architecture], [Technical Specification], Lessons Learned / Text3: Risk Register, Work Items List, [Meeting and Review Records], Work Breakdown Structure, Iteration Plan, Test Plan (optional) / Text7: Agile Estimation, Assign Changes to an Iteration, Managing Risks, [Project Planning Guidance], Iteration Planning, Prioritizing Work Items, Deploy the Solution,
- 7: Identify and plan for security risks and requirements / Text2: Application Security Risk & Requirements, Application Threat Modeling, Current Internal And External Security Policies, Standards And Procedures , Security Certification, Project Plan Standard, APL Compliant Policy, Project Plan / Text3: Project Plan, System Security Plan / Text7: Relevant Stakeholders, Guide for Applying the Risk Management Framework to Federal Information Systems: A Security Life Cycle Approach (SP 800-37), Guide for Developing Security Plans for Federal Information Systems (SP 800-18)
- 8: Plan how configuration management will be performed on the project. / Text2: Configuration Management Plan Standard, APL Compliant Policy, CI/DI List Standard, [Measurements] / Text3: Configuration Management Plan, CI and DI List
- 10: Assess project status and identify any blocking issues and opportunities. Identify and manage exceptions, problems, and risks. Communicate project status. / Text2: Risk Register Standard, Work Items List Standard, Engineering Design Document, Work Breakdown Structure, [Measurements], [Project Risk], [Project Work], Test Plan (optional), Lessons Learned, Measurement Definitions / Text3: Risk Register, [Meeting and Review Records], Engineering Design Document, Lessons Learned, [Project Status], Test Plan (optional) / Text7: Metrics, Risk, Assign Changes to an Iteration, [Collaboration Guidance],
- 11: To collect, analyze and report on project performance using measurements / Text2: Project Plan, [Measurements], Measurement Definitions / Text3: [Meeting and Review Records], Risk Register, Work Items List, [Measurements], Lessons Learned / Text7: The Goal Question Metric Approach
- 12: A process to define and make key project decisions more objectively and wisely. / Text2: DAR Log Standard, APL Compliant Policy / Text3: Decision Log / Text7: Mind Mapping Best Practices, Team Track Training, TeamTrack Guides
- 13: Determine success or failure of the iteration. Apply the lessons learned to modify the project or improve the process. / Text2: Work Items List Standard, Traceability Matrix, Lessons Learned, [Project Status], Test Plan (optional), [Project Definition and Scope], [Technical Specification], [Technical Test Results], Measurement Definitions, [Measurements] / Text3: Iteration Plan, Work Items List, Self Assessment Survey (optional), Process Improvements List, Traceability Matrix, Lessons Learned / Text7: Retrospective, Phase Milestones, Conduct Project Retrospective, , Deploy the Solution
- 19: Text1: System Wide Requirements Standard, [Technical Specification], Glossary (Optional), System Wide Requirements, Use Case Specification, Requirements Model, Traceability Matrix, Application Security Risk & Requirements, Application Threat Modeling / Text4: Current Internal And External Security Policies, Standards And Procedures , System-Wide Requirements, Use Case Specification, Requirements Model, Acceptable Risks and Safeguards Audit Spreadsheet , Test Information Standard, Test Information
- 20: This task describes how to identify and outline the requirements for the system so that the scope of work may be determined. / Text2: System Wide Requirements Standard, [Customer Requirements], [Technical Specification] / Text3: Glossary (Optional), System Wide Requirements, Use Case Specification, Use Case Survey (Optional), Requirements Model / Text7: Requirements, System-Wide Requirements, Identify and Outline Actors and Use Cases, Developing System-Wide Requirements Specification, Effective Requirement Reviews, Requirements Gathering Techniques, Dimensions RM Training, Dimensions RM Guides
- 21: This task details one or more requirement that does not apply to a specific use case. / Text2: System Wide Requirements Standard, System Wide Requirements, [Customer Requirements], Use Case Specification, Traceability Matrix / Text3: Glossary (Optional), System Wide Requirements, Traceability Matrix / Text7: Effective Requirement Reviews, Developing System-Wide Requirements Specification, Dimensions RM Training, Dimensions RM Guides
- 22: Identify the security risks and requirements and ensure they are documented appropriately. / Text2: Application Security Risk & Requirements, Application Threat Modeling, Current Internal And External Security Policies, Standards And Procedures / Text3: Application Security Risk & Requirements, Application Threat Modeling, System-Wide Requirements, Use Case Specification, Requirements Model, Acceptable Risks and Safeguards Audit Spreadsheet / Text7: Relevant Stakeholders, Security Risk Assessment Procedure, Dimensions RM Training, Dimensions RM Guides
- 23: Develop the test cases and test data for the requirements to be tested. / Text2: Test Information Standard, [Technical Specification], Traceability Matrix, Test Plan (optional), Test Information / Text3: Test Information, Traceability Matrix, Test Plan (optional) / Text7: Test Ideas, HP LoadRunner Training, HP LoadRunner Guides, HP Quality Center Training, HP Quality Center Guides, HP Quick Test Pro Training, HP Quick Test Pro Guides
- 24: Support the assessment of the system implementation against its requirements / Text2: Current Internal And External Security Policies, Standards And Procedures / Text3: [Meeting and Review Records]

| ID | WBS | Task | Type | Duration | Start | Finish | Total slack | Constraint | Resources | Work |
| --- | --- | --- | --- | --- | --- | --- | --- | --- | --- | --- |
| 25 | 1.1.1.3.2 | **Develop Solution Increment** |  | 65d | 2016-06-01 | 2016-08-31 | 0d |  |  | 9296h |
| 26 | 1.1.1.3.2.1 | Design the Solution | manual | 31d | 2016-06-01 | 2016-08-31 |  | start no earlier than 2016-06-01 | Stearns; Douglas R; Tiongson; John Eric Z (NONUS); Palacherla; Susmitha C; Huang; Lili | 992h |
| 27 | 1.1.1.3.2.2 | Decision Analysis and Resolution | manual | 65d | 2016-06-01 | 2016-08-31 |  | start no earlier than 2016-06-01 | Ingram Michael T; Palacherla; Susmitha C | 768h |
| 28 | 1.1.1.3.2.3 | Create, Review/Update Security Requirements | manual | 65d | 2016-06-01 | 2016-08-31 |  | start no earlier than 2016-06-01 | Stearns; Douglas R; Tiongson; John Eric Z (NONUS); Ingram Michael T; Szabo; Brian P; Huang; Lili; Palacherla; Susmitha C | 1760h |
| 29 | 1.1.1.3.2.4 | Create Developer Tests | manual | 31d | 2016-06-01 | 2016-08-31 |  | start no earlier than 2016-06-01 | Huang; Lili; Palacherla; Susmitha C | 496h |
| 30 | 1.1.1.3.2.5 | Develop Solution | manual | 31d | 2016-06-01 | 2016-08-31 |  | start no earlier than 2016-06-01 | Huang; Lili; Palacherla; Susmitha C | 496h |
| 31 | 1.1.1.3.2.6 | Run Developer Tests | manual | 31d | 2016-06-01 | 2016-08-31 |  | start no earlier than 2016-06-01 | Huang; Lili; Palacherla; Susmitha C | 496h |
| 32 | 1.1.1.3.2.7 | Integrate and Create Build | manual | 31d | 2016-06-01 | 2016-08-31 |  | start no earlier than 2016-06-01 | Huang; Lili; Palacherla; Susmitha C | 496h |
| 33 | 1.1.1.3.2.8 | Evaluate Code for Security | manual | 65d | 2016-06-01 | 2016-08-31 |  | start no earlier than 2016-06-01 | Huang; Lili; Palacherla; Susmitha C; Szabo; Brian P; Information System Security Officer | 1264h |
| 34 | 1.1.1.3.2.9 | Evaluate Security Testing | manual | 65d | 2016-06-01 | 2016-08-31 |  | start no earlier than 2016-06-01 | Huang; Lili; Palacherla; Susmitha C; Szabo; Brian P; Information System Security Officer | 1264h |
| 35 | 1.1.1.3.2.10 | Verify Operations Security | manual | 65d | 2016-06-01 | 2016-08-31 |  | start no earlier than 2016-06-01 | Huang; Lili; Palacherla; Susmitha C; Szabo; Brian P; Information System Security Officer | 1264h |
| 36 | 1.1.1.3.3 | **Test Solution** |  | 65d | 2016-06-01 | 2016-08-31 | 0d |  |  | 5056h |
| 37 | 1.1.1.3.3.1 | Implement Tests (optional) | manual | 31d | 2016-06-01 | 2016-08-31 |  | start no earlier than 2016-06-01 | Stearns; Douglas R; Tiongson; John Eric Z (NONUS); Palacherla; Susmitha C; Huang; Lili | 992h |
| 38 | 1.1.1.3.3.2 | Run Tests | manual | 31d | 2016-06-01 | 2016-08-31 |  | start no earlier than 2016-06-01 | Stearns; Douglas R | 248h |
| 39 | 1.1.1.3.3.3 | Evaluate Security Testing | manual | 62d | 2016-06-01 | 2016-08-31 |  | start no earlier than 2016-06-01 | Stearns; Douglas R; Szabo; Brian P | 744h |
| 40 | 1.1.1.3.3.4 | Peer Review Selected Work Products | manual | 65d | 2016-06-01 | 2016-08-31 |  | start no earlier than 2016-06-01 | Hinman; David L; Huang; Lili; Palacherla; Susmitha C; Stearns; Douglas R | 2080h |
| 41 | 1.1.1.3.3.5 | Customer Acceptance Testing | manual | 31d | 2016-06-01 | 2016-08-31 |  | start no earlier than 2016-06-01 | Tiongson; John Eric Z (NONUS); Stearns; Douglas R; Palacherla; Susmitha C; Huang; Lili | 992h |
| 42 | 1.1.1.4 | **Maintenance Iteration 2** |  | 62d | 2016-09-01 | 2016-11-30 |  |  |  | 18896h |
| 43 | 1.1.1.4.1 | **Identify and Refine Requirements** |  | 62d | 2016-09-01 | 2016-11-30 | 0d |  |  | 4464h |
| 44 | 1.1.1.4.1.1 | Identify and Outline Requirements | manual | 62d | 2016-09-01 | 2016-11-30 |  | start no earlier than 2016-09-01 | Stearns; Douglas R; Tiongson; John Eric Z (NONUS); Huang; Lili; Palacherla; Susmitha C | 1984h |
| 45 | 1.1.1.4.1.2 | Detail System-Wide Requirements | manual | 62d | 2016-09-01 | 2016-11-30 |  | start no earlier than 2016-09-01 | Stearns; Douglas R; Tiongson; John Eric Z (NONUS); Huang; Lili | 1488h |
| 46 | 1.1.1.4.1.3 | Create, Review/Update Security Requirements | manual | 62d | 2016-09-01 | 2016-11-30 |  | start no earlier than 2016-09-01 | Stearns; Douglas R; Tiongson; John Eric Z (NONUS); Ingram Michael T; Huang; Lili; Szabo; Brian P; Palacherla; Susmitha C | 496h |
| 47 | 1.1.1.4.1.4 | Create Test Cases | milestone, manual | 0d | 2016-09-01 | 2016-09-01 |  | start no earlier than 2016-09-01 | Stearns; Douglas R; Huang; Lili; Palacherla; Susmitha C |  |
| 48 | 1.1.1.4.1.5 | Review Test Activities for Security | manual | 62d | 2016-09-01 | 2016-11-30 |  | start no earlier than 2016-09-01 | Tiongson; John Eric Z (NONUS); Stearns; Douglas R; Ingram Michael T; Szabo; Brian P | 496h |

Notes:
- 25: Text1: [Technical Architecture], [Technical Specification], Design, [Software Implementation], [Software Design], Developer Test, Implementation, Test Log, Build, Design Standard, Application Security Risk & Requirements / Text4: Current Internal And External Security Policies, Standards And Procedures , Application Threat Modeling, Current Internal And External Security Policies, Standards And Procedures , Secure C++ Code, Secure Coding, Secure Java Code, System-Wide Requirements
- 26: Identify the elements and devise the interactions, behavior, relations, and data necessary to realize some functionality. Render the design visually to aid in solving the problem and communicating the solution. / Text2: [Technical Architecture], [Technical Specification], Design Standard, Traceability Matrix, Design / Text3: Design, Traceability Matrix / Text7: Architectural Mechanism, Design Mechanism, Implementation Mechanism, Pattern, Design, Requirements Realization, Software Reuse, Entity-Control-Boundary Pattern, Analyze the Design, Evolve the Design, [Design Guidance]
- 27: A process to define and make key project decisions more objectively and wisely. / Text2: DAR Log Standard, APL Compliant Policy / Text3: Decision Log / Text7: Mind Mapping Best Practices, Team Track Training, TeamTrack Guides
- 28: Identify the security risks and requirements and ensure they are documented appropriately. / Text2: Application Security Risk & Requirements, Application Threat Modeling, Current Internal And External Security Policies, Standards And Procedures / Text3: Application Security Risk & Requirements, Application Threat Modeling, System-Wide Requirements, Use Case Specification, Requirements Model, Acceptable Risks and Safeguards Audit Spreadsheet / Text7: Relevant Stakeholders, Security Risk Assessment Procedure, Dimensions RM Training, Dimensions RM Guides
- 29: Implement one or more tests that enable the validation of the individual implementation elements through execution. / Text2: [Software Implementation], Traceability Matrix, [Software Design] / Text3: Developer Test, Traceability Matrix / Text7: Developer Testing, Test Driven Development
- 30: Implement source code to provide new functionality or fix defects. / Text2: [Software Design], [Technical Specification], Traceability Matrix, Developer Test, [Software Implementation] / Text3: Implementation, Traceability Matrix / Text7: Refactoring, Mapping from Design to Code
- 31: Run tests against the individual implementation elements to verify that their internal structures work as specified. / Text2: Developer Test, [Software Implementation] / Text3: Test Log / Text7: Developer Testing, HP LoadRunner Training, HP LoadRunner Guides, HP Quality Center Training, HP Quality Center Guides, HP Quick Test Pro Training, HP Quick Test Pro Guides
- 32: This task describes how to integrate all changes made by developers into the code base and perform the minimal testing to validate the build. / Text2: [Software Implementation], Developer Test, Test Log / Text3: Build, Test Log / Text7: Change Set, Workspace, Promoting Changes, , Software Release Management Gold Disk SOP
- 33: Support the assessment of the system implementation against its requirements and within its modeled operational environment by identifying and eliminating source code vulnerabilities. / Text2: Current Internal And External Security Policies, Standards And Procedures , Secure C++ Code, Secure Coding, Secure Java Code, Secure C# and VB.NET Development
- 34: Support the assessment of the system implementation against its requirements and within its modeled operational environment by ensuring the test results sufficiently cover all testable security requirements. / Text2: Current Internal And External Security Policies, Standards And Procedures
- 35: Verify that system security features are configured, enabled, tested, and verified. / Text2: Application Security Risk & Requirements, Current Internal And External Security Policies, Standards And Procedures / Text3: [Meeting and Review Records]
- 36: Text1: Test Information Standard, Test Information, [Software Implementation], Current Internal And External Security Policies, Standards And Procedures , Peer Review Results, Change Request / Problem Report, [Project Work], Peer Review Meeting Package / Text4: Peer Review Meeting Package (Optional), Test Plan (optional), Measurement Definitions, System Security Plan
- 37: Implement Test Scripts to validate a Build of the solution. Organize Test Scripts into suites, and collaborate to ensure appropriate depth and breadth of test feedback. / Text2: Test Information Standard, Test Information, Test Plan (optional), [Software Implementation] / Text3: Test Information, Test Plan (optional) / Text7: Test Ideas, Maintaining Automated Test Suites, Programming Automated Tests, Test Ideas, HP LoadRunner Training, HP LoadRunner Guides, HP Quality Center Training, HP Quality Center Guides, HP Quick Test Pro Training, HP Quick Test Pro Guides
- 38: Run the appropriate tests scripts, analyze results, articulate issues, and communicate test results to the team. / Text2: Test Information Standard, [Software Implementation], Test Information, Test Plan (optional) / Text3: Test Information, Test Plan (optional) / Text7: Maintaining Automated Test Suites, Programming Automated Tests, Test Suite, HP LoadRunner Training, HP LoadRunner Guides, HP Quality Center Training, HP Quality Center Guides, HP Quick Test Pro Training, HP Quick Test Pro Guides
- 39: Support the assessment of the system implementation against its requirements and within its modeled operational environment by ensuring the test results sufficiently cover all testable security requirements. / Text2: Current Internal And External Security Policies, Standards And Procedures
- 40: This process is used to remove defects from artifacts early in the lifecycle / Text2: [Project Work], Peer Review Meeting Package / Text3: Peer Review Results, Peer Review Meeting Package (Optional) / Text7: HP LoadRunner Training, HP LoadRunner Guides, HP Quality Center Training, HP Quality Center Guides, HP Quick Test Pro Training, HP Quick Test Pro Guides
- 41: To verify system works according to requirements, and to officially accept the system. Customer sign-off takes place during this test. / Text2: Test Plan (optional), Test Information / Text3: Test Information, Test Plan (optional) / Text7: HP LoadRunner Training, HP LoadRunner Guides, HP Quality Center Training, HP Quality Center Guides, HP Quick Test Pro Training, HP Quick Test Pro Guides
- 43: Text1: System Wide Requirements Standard, [Technical Specification], Glossary (Optional), System Wide Requirements, Use Case Specification, Requirements Model, Traceability Matrix, Application Security Risk & Requirements, Application Threat Modeling / Text4: Current Internal And External Security Policies, Standards And Procedures , System-Wide Requirements, Use Case Specification, Requirements Model, Acceptable Risks and Safeguards Audit Spreadsheet , Test Information Standard, Test Information
- 44: This task describes how to identify and outline the requirements for the system so that the scope of work may be determined. / Text2: System Wide Requirements Standard, [Customer Requirements], [Technical Specification] / Text3: Glossary (Optional), System Wide Requirements, Use Case Specification, Use Case Survey (Optional), Requirements Model / Text7: Requirements, System-Wide Requirements, Identify and Outline Actors and Use Cases, Developing System-Wide Requirements Specification, Effective Requirement Reviews, Requirements Gathering Techniques, Dimensions RM Training, Dimensions RM Guides
- 45: This task details one or more requirement that does not apply to a specific use case. / Text2: System Wide Requirements Standard, System Wide Requirements, [Customer Requirements], Use Case Specification, Traceability Matrix / Text3: Glossary (Optional), System Wide Requirements, Traceability Matrix / Text7: Effective Requirement Reviews, Developing System-Wide Requirements Specification, Dimensions RM Training, Dimensions RM Guides
- 46: Identify the security risks and requirements and ensure they are documented appropriately. / Text2: Application Security Risk & Requirements, Application Threat Modeling, Current Internal And External Security Policies, Standards And Procedures / Text3: Application Security Risk & Requirements, Application Threat Modeling, System-Wide Requirements, Use Case Specification, Requirements Model, Acceptable Risks and Safeguards Audit Spreadsheet / Text7: Relevant Stakeholders, Security Risk Assessment Procedure, Dimensions RM Training, Dimensions RM Guides
- 47: Develop the test cases and test data for the requirements to be tested. / Text2: Test Information Standard, [Technical Specification], Traceability Matrix, Test Plan (optional), Test Information / Text3: Test Information, Traceability Matrix, Test Plan (optional) / Text7: Test Ideas, HP LoadRunner Training, HP LoadRunner Guides, HP Quality Center Training, HP Quality Center Guides, HP Quick Test Pro Training, HP Quick Test Pro Guides
- 48: Support the assessment of the system implementation against its requirements / Text2: Current Internal And External Security Policies, Standards And Procedures / Text3: [Meeting and Review Records]

| ID | WBS | Task | Type | Duration | Start | Finish | Total slack | Constraint | Resources | Work |
| --- | --- | --- | --- | --- | --- | --- | --- | --- | --- | --- |
| 49 | 1.1.1.4.2 | **Develop Solution Increment** |  | 62d | 2016-09-01 | 2016-11-30 | 0d |  |  | 7216h |
| 50 | 1.1.1.4.2.1 | Design the Solution | manual | 62d | 2016-09-01 | 2016-11-30 |  | start no earlier than 2016-09-01 | Stearns; Douglas R; Tiongson; John Eric Z (NONUS); Palacherla; Susmitha C; Huang; Lili | 1984h |
| 51 | 1.1.1.4.2.2 | Decision Analysis and Resolution | manual | 34d | 2016-09-01 | 2016-11-30 |  | start no earlier than 2016-09-01 | Ingram Michael T; Palacherla; Susmitha C | 272h |
| 52 | 1.1.1.4.2.3 | Create, Review/Update Security Requirements | manual | 62d | 2016-09-01 | 2016-11-30 |  | start no earlier than 2016-09-01 | Stearns; Douglas R; Tiongson; John Eric Z (NONUS); Ingram Michael T; Szabo; Brian P; Huang; Lili; Palacherla; Susmitha C | 496h |
| 53 | 1.1.1.4.2.4 | Create Developer Tests | manual | 62d | 2016-09-01 | 2016-11-30 |  | start no earlier than 2016-09-01 | Huang; Lili; Palacherla; Susmitha C | 992h |
| 54 | 1.1.1.4.2.5 | Develop Solution | manual | 62d | 2016-09-01 | 2016-11-30 |  | start no earlier than 2016-09-01 | Huang; Lili; Palacherla; Susmitha C | 992h |
| 55 | 1.1.1.4.2.6 | Run Developer Tests | manual | 62d | 2016-09-01 | 2016-11-30 |  | start no earlier than 2016-09-01 | Huang; Lili; Palacherla; Susmitha C | 992h |
| 56 | 1.1.1.4.2.7 | Integrate and Create Build | manual | 34d | 2016-09-01 | 2016-11-30 |  | start no earlier than 2016-09-01 | Huang; Lili; Palacherla; Susmitha C |  |
| 57 | 1.1.1.4.2.8 | Evaluate Code for Security | manual | 62d | 2016-09-01 | 2016-11-30 |  | start no earlier than 2016-09-01 | Huang; Lili; Palacherla; Susmitha C; Szabo; Brian P; Information System Security Officer | 496h |
| 58 | 1.1.1.4.2.9 | Evaluate Security Testing | manual | 62d | 2016-09-01 | 2016-11-30 |  | start no earlier than 2016-09-01 | Huang; Lili; Palacherla; Susmitha C; Szabo; Brian P; Information System Security Officer | 496h |
| 59 | 1.1.1.4.2.10 | Verify Operations Security | manual | 62d | 2016-09-01 | 2016-11-30 |  | start no earlier than 2016-09-01 | Huang; Lili; Palacherla; Susmitha C; Szabo; Brian P; Information System Security Officer | 496h |
| 60 | 1.1.1.4.3 | **Test Solution** |  | 62d | 2016-09-01 | 2016-11-30 | 0d |  |  | 7216h |
| 61 | 1.1.1.4.3.1 | Implement Tests (optional) | manual | 62d | 2016-09-01 | 2016-11-30 |  | start no earlier than 2016-09-01 | Stearns; Douglas R; Tiongson; John Eric Z (NONUS); Palacherla; Susmitha C; Huang; Lili | 1984h |
| 62 | 1.1.1.4.3.2 | Run Tests | manual | 34d | 2016-09-01 | 2016-11-30 |  | start no earlier than 2016-09-01 | Stearns; Douglas R | 272h |
| 63 | 1.1.1.4.3.3 | Evaluate Security Testing | manual | 62d | 2016-09-01 | 2016-11-30 |  | start no earlier than 2016-09-01 | Szabo; Brian P; Stearns; Douglas R | 992h |
| 64 | 1.1.1.4.3.4 | Peer Review Selected Work Products | manual | 62d | 2016-09-01 | 2016-11-30 |  | start no earlier than 2016-09-01 | Hinman; David L; Huang; Lili; Palacherla; Susmitha C; Stearns; Douglas R | 1984h |
| 65 | 1.1.1.4.3.5 | Customer Acceptance Testing | manual | 62d | 2016-09-01 | 2016-11-30 |  | start no earlier than 2016-09-01 | Tiongson; John Eric Z (NONUS); Stearns; Douglas R; Palacherla; Susmitha C; Huang; Lili | 1984h |
| 66 | 1.1.1.5 | **Maintenance Iteration 3** |  | 62d | 2016-12-01 | 2017-02-28 |  |  |  | 18400h |
| 67 | 1.1.1.5.1 | **Identify and Refine Requirements** |  | 62d | 2016-12-01 | 2017-02-28 | 0d |  |  | 5952h |
| 68 | 1.1.1.5.1.1 | Identify and Outline Requirements | manual | 62d | 2016-12-01 | 2017-02-28 |  | start no earlier than 2016-12-01 | Stearns; Douglas R; Tiongson; John Eric Z (NONUS); Huang; Lili; Palacherla; Susmitha C | 1984h |
| 69 | 1.1.1.5.1.2 | Detail System-Wide Requirements | manual | 62d | 2016-12-01 | 2017-02-28 |  | start no earlier than 2016-12-01 | Stearns; Douglas R; Tiongson; John Eric Z (NONUS); Huang; Lili | 1488h |
| 70 | 1.1.1.5.1.3 | Create, Review/Update Security Requirements | manual | 62d | 2016-12-01 | 2017-02-28 |  | start no earlier than 2016-12-01 | Stearns; Douglas R; Tiongson; John Eric Z (NONUS); Ingram Michael T; Huang; Lili; Szabo; Brian P; Palacherla; Susmitha C | 496h |
| 71 | 1.1.1.5.1.4 | Create Test Cases | manual | 62d | 2016-12-01 | 2017-02-28 |  | start no earlier than 2016-12-01 | Stearns; Douglas R; Huang; Lili; Palacherla; Susmitha C | 1488h |
| 72 | 1.1.1.5.1.5 | Review Test Activities for Security | manual | 62d | 2016-12-01 | 2017-02-28 |  | start no earlier than 2016-12-01 | Tiongson; John Eric Z (NONUS); Stearns; Douglas R; Ingram Michael T; Szabo; Brian P | 496h |

Notes:
- 49: Text1: [Technical Architecture], [Technical Specification], Design, [Software Implementation], [Software Design], Developer Test, Implementation, Test Log, Build, Design Standard, Application Security Risk & Requirements / Text4: Current Internal And External Security Policies, Standards And Procedures , Application Threat Modeling, Current Internal And External Security Policies, Standards And Procedures , Secure C++ Code, Secure Coding, Secure Java Code, System-Wide Requirements
- 50: Identify the elements and devise the interactions, behavior, relations, and data necessary to realize some functionality. Render the design visually to aid in solving the problem and communicating the solution. / Text2: [Technical Architecture], [Technical Specification], Design Standard, Traceability Matrix, Design / Text3: Design, Traceability Matrix / Text7: Architectural Mechanism, Design Mechanism, Implementation Mechanism, Pattern, Design, Requirements Realization, Software Reuse, Entity-Control-Boundary Pattern, Analyze the Design, Evolve the Design, [Design Guidance]
- 51: A process to define and make key project decisions more objectively and wisely. / Text2: DAR Log Standard, APL Compliant Policy / Text3: Decision Log / Text7: Mind Mapping Best Practices, Team Track Training, TeamTrack Guides
- 52: Identify the security risks and requirements and ensure they are documented appropriately. / Text2: Application Security Risk & Requirements, Application Threat Modeling, Current Internal And External Security Policies, Standards And Procedures / Text3: Application Security Risk & Requirements, Application Threat Modeling, System-Wide Requirements, Use Case Specification, Requirements Model, Acceptable Risks and Safeguards Audit Spreadsheet / Text7: Relevant Stakeholders, Security Risk Assessment Procedure, Dimensions RM Training, Dimensions RM Guides
- 53: Implement one or more tests that enable the validation of the individual implementation elements through execution. / Text2: [Software Implementation], Traceability Matrix, [Software Design] / Text3: Developer Test, Traceability Matrix / Text7: Developer Testing, Test Driven Development
- 54: Implement source code to provide new functionality or fix defects. / Text2: [Software Design], [Technical Specification], Traceability Matrix, Developer Test, [Software Implementation] / Text3: Implementation, Traceability Matrix / Text7: Refactoring, Mapping from Design to Code
- 55: Run tests against the individual implementation elements to verify that their internal structures work as specified. / Text2: Developer Test, [Software Implementation] / Text3: Test Log / Text7: Developer Testing, HP LoadRunner Training, HP LoadRunner Guides, HP Quality Center Training, HP Quality Center Guides, HP Quick Test Pro Training, HP Quick Test Pro Guides
- 56: This task describes how to integrate all changes made by developers into the code base and perform the minimal testing to validate the build. / Text2: [Software Implementation], Developer Test, Test Log / Text3: Build, Test Log / Text7: Change Set, Workspace, Promoting Changes, , Software Release Management Gold Disk SOP
- 57: Support the assessment of the system implementation against its requirements and within its modeled operational environment by identifying and eliminating source code vulnerabilities. / Text2: Current Internal And External Security Policies, Standards And Procedures , Secure C++ Code, Secure Coding, Secure Java Code, Secure C# and VB.NET Development
- 58: Support the assessment of the system implementation against its requirements and within its modeled operational environment by ensuring the test results sufficiently cover all testable security requirements. / Text2: Current Internal And External Security Policies, Standards And Procedures
- 59: Verify that system security features are configured, enabled, tested, and verified. / Text2: Application Security Risk & Requirements, Current Internal And External Security Policies, Standards And Procedures / Text3: [Meeting and Review Records]
- 60: Text1: Test Information Standard, Test Information, [Software Implementation], Current Internal And External Security Policies, Standards And Procedures , Peer Review Results, Change Request / Problem Report, [Project Work], Peer Review Meeting Package / Text4: Peer Review Meeting Package (Optional), Test Plan (optional), Measurement Definitions, System Security Plan
- 61: Implement Test Scripts to validate a Build of the solution. Organize Test Scripts into suites, and collaborate to ensure appropriate depth and breadth of test feedback. / Text2: Test Information Standard, Test Information, Test Plan (optional), [Software Implementation] / Text3: Test Information, Test Plan (optional) / Text7: Test Ideas, Maintaining Automated Test Suites, Programming Automated Tests, Test Ideas, HP LoadRunner Training, HP LoadRunner Guides, HP Quality Center Training, HP Quality Center Guides, HP Quick Test Pro Training, HP Quick Test Pro Guides
- 62: Run the appropriate tests scripts, analyze results, articulate issues, and communicate test results to the team. / Text2: Test Information Standard, [Software Implementation], Test Information, Test Plan (optional) / Text3: Test Information, Test Plan (optional) / Text7: Maintaining Automated Test Suites, Programming Automated Tests, Test Suite, HP LoadRunner Training, HP LoadRunner Guides, HP Quality Center Training, HP Quality Center Guides, HP Quick Test Pro Training, HP Quick Test Pro Guides
- 63: Support the assessment of the system implementation against its requirements and within its modeled operational environment by ensuring the test results sufficiently cover all testable security requirements. / Text2: Current Internal And External Security Policies, Standards And Procedures
- 64: This process is used to remove defects from artifacts early in the lifecycle / Text2: [Project Work], Peer Review Meeting Package / Text3: Peer Review Results, Peer Review Meeting Package (Optional) / Text7: HP LoadRunner Training, HP LoadRunner Guides, HP Quality Center Training, HP Quality Center Guides, HP Quick Test Pro Training, HP Quick Test Pro Guides
- 65: To verify system works according to requirements, and to officially accept the system. Customer sign-off takes place during this test. / Text2: Test Plan (optional), Test Information / Text3: Test Information, Test Plan (optional) / Text7: HP LoadRunner Training, HP LoadRunner Guides, HP Quality Center Training, HP Quality Center Guides, HP Quick Test Pro Training, HP Quick Test Pro Guides
- 67: Text1: System Wide Requirements Standard, [Technical Specification], Glossary (Optional), System Wide Requirements, Use Case Specification, Requirements Model, Traceability Matrix, Application Security Risk & Requirements, Application Threat Modeling / Text4: Current Internal And External Security Policies, Standards And Procedures , System-Wide Requirements, Use Case Specification, Requirements Model, Acceptable Risks and Safeguards Audit Spreadsheet , Test Information Standard, Test Information
- 68: This task describes how to identify and outline the requirements for the system so that the scope of work may be determined. / Text2: System Wide Requirements Standard, [Customer Requirements], [Technical Specification] / Text3: Glossary (Optional), System Wide Requirements, Use Case Specification, Use Case Survey (Optional), Requirements Model / Text7: Requirements, System-Wide Requirements, Identify and Outline Actors and Use Cases, Developing System-Wide Requirements Specification, Effective Requirement Reviews, Requirements Gathering Techniques, Dimensions RM Training, Dimensions RM Guides
- 69: This task details one or more requirement that does not apply to a specific use case. / Text2: System Wide Requirements Standard, System Wide Requirements, [Customer Requirements], Use Case Specification, Traceability Matrix / Text3: Glossary (Optional), System Wide Requirements, Traceability Matrix / Text7: Effective Requirement Reviews, Developing System-Wide Requirements Specification, Dimensions RM Training, Dimensions RM Guides
- 70: Identify the security risks and requirements and ensure they are documented appropriately. / Text2: Application Security Risk & Requirements, Application Threat Modeling, Current Internal And External Security Policies, Standards And Procedures / Text3: Application Security Risk & Requirements, Application Threat Modeling, System-Wide Requirements, Use Case Specification, Requirements Model, Acceptable Risks and Safeguards Audit Spreadsheet / Text7: Relevant Stakeholders, Security Risk Assessment Procedure, Dimensions RM Training, Dimensions RM Guides
- 71: Develop the test cases and test data for the requirements to be tested. / Text2: Test Information Standard, [Technical Specification], Traceability Matrix, Test Plan (optional), Test Information / Text3: Test Information, Traceability Matrix, Test Plan (optional) / Text7: Test Ideas, HP LoadRunner Training, HP LoadRunner Guides, HP Quality Center Training, HP Quality Center Guides, HP Quick Test Pro Training, HP Quick Test Pro Guides
- 72: Support the assessment of the system implementation against its requirements / Text2: Current Internal And External Security Policies, Standards And Procedures / Text3: [Meeting and Review Records]

| ID | WBS | Task | Type | Duration | Start | Finish | Total slack | Constraint | Resources | Work |
| --- | --- | --- | --- | --- | --- | --- | --- | --- | --- | --- |
| 73 | 1.1.1.5.2 | **Develop Solution Increment** |  | 62d | 2016-12-01 | 2017-02-28 |  |  |  | 7216h |
| 74 | 1.1.1.5.2.1 | Design the Solution | manual | 62d | 2016-12-01 | 2017-02-28 |  | start no earlier than 2016-12-01 | Stearns; Douglas R; Tiongson; John Eric Z (NONUS); Palacherla; Susmitha C; Huang; Lili | 1984h |
| 75 | 1.1.1.5.2.2 | Decision Analysis and Resolution | manual | 34d | 2016-12-01 | 2017-02-28 |  | start no earlier than 2016-12-01 | Ingram Michael T; Palacherla; Susmitha C | 272h |
| 76 | 1.1.1.5.2.3 | Create, Review/Update Security Requirements | manual | 62d | 2016-12-01 | 2017-02-28 |  | start no earlier than 2016-12-01 | Stearns; Douglas R; Tiongson; John Eric Z (NONUS); Ingram Michael T; Szabo; Brian P; Huang; Lili; Palacherla; Susmitha C | 496h |
| 77 | 1.1.1.5.2.4 | Create Developer Tests | manual | 62d | 2016-12-01 | 2017-02-28 |  | start no earlier than 2016-12-01 | Huang; Lili; Palacherla; Susmitha C | 992h |
| 78 | 1.1.1.5.2.5 | Develop Solution | manual | 62d | 2016-12-01 | 2017-02-28 |  | start no earlier than 2016-12-01 | Huang; Lili; Palacherla; Susmitha C | 992h |
| 79 | 1.1.1.5.2.6 | Run Developer Tests | manual | 62d | 2016-12-01 | 2017-02-28 |  | start no earlier than 2016-12-01 | Huang; Lili; Palacherla; Susmitha C | 992h |
| 80 | 1.1.1.5.2.7 | Integrate and Create Build | manual | 34d | 2016-12-01 | 2017-02-28 |  | start no earlier than 2016-12-01 | Huang; Lili; Palacherla; Susmitha C |  |
| 81 | 1.1.1.5.2.8 | Evaluate Code for Security | manual | 62d | 2016-12-01 | 2017-02-28 |  | start no earlier than 2016-12-01 | Huang; Lili; Palacherla; Susmitha C; Szabo; Brian P; Information System Security Officer | 496h |
| 82 | 1.1.1.5.2.9 | Evaluate Security Testing | manual | 62d | 2016-12-01 | 2017-02-28 |  | start no earlier than 2016-12-01 | Huang; Lili; Palacherla; Susmitha C; Szabo; Brian P; Information System Security Officer | 496h |
| 83 | 1.1.1.5.2.10 | Verify Operations Security | manual | 62d | 2016-12-01 | 2017-02-28 |  | start no earlier than 2016-12-01 | Huang; Lili; Palacherla; Susmitha C; Szabo; Brian P; Information System Security Officer | 496h |
| 84 | 1.1.1.5.3 | **Test Solution** |  | 62d | 2016-12-01 | 2017-02-28 |  |  |  | 5232h |
| 85 | 1.1.1.5.3.1 | Run Tests | manual | 34d | 2016-12-01 | 2017-02-28 |  | start no earlier than 2016-12-01 | Stearns; Douglas R | 272h |
| 86 | 1.1.1.5.3.2 | Evaluate Security Testing | manual | 62d | 2016-12-01 | 2017-02-28 |  | start no earlier than 2016-12-01 | Szabo; Brian P; Stearns; Douglas R | 992h |
| 87 | 1.1.1.5.3.3 | Peer Review Selected Work Products | manual | 62d | 2016-12-01 | 2017-02-28 |  | start no earlier than 2016-12-01 | Hinman; David L; Huang; Lili; Palacherla; Susmitha C; Stearns; Douglas R | 1984h |
| 88 | 1.1.1.5.3.4 | Customer Acceptance Testing | manual | 62d | 2016-12-01 | 2017-02-28 |  | start no earlier than 2016-12-01 | Tiongson; John Eric Z (NONUS); Stearns; Douglas R; Palacherla; Susmitha C; Huang; Lili | 1984h |
| 89 | 1.1.1.5.4 | **Automate Weekly/Monthly Program Reports** |  | 62d | 2016-12-01 | 2017-02-28 |  |  |  |  |
| 90 | 1.1.1.5.4.1 | Requirements |  | 62d | 2016-12-01 | 2017-02-28 | 1788d | finish no earlier than 2017-02-28 |  |  |
| 91 | 1.1.1.5.4.2 | Development |  | 62d | 2016-12-01 | 2017-02-28 | 1788d | finish no earlier than 2017-02-28 |  |  |
| 92 | 1.1.1.5.4.3 | Testing |  | 62d | 2016-12-01 | 2017-02-28 | 1788d | finish no earlier than 2017-02-28 |  |  |
| 93 | 1.1.1.5.4.4 | Implementation |  | 62d | 2016-12-01 | 2017-02-28 | 1788d | finish no earlier than 2017-02-28 |  |  |
| 94 | 1.1.1.6 | **Maintenance Iteration 4** |  | 65d | 2017-03-01 | 2017-05-31 |  |  |  | 21344h |
| 95 | 1.1.1.6.1 | **Identify and Refine Requirements** |  | 65d | 2017-03-01 | 2017-05-31 | 0d |  |  | 6240h |
| 96 | 1.1.1.6.1.1 | Identify and Outline Requirements | manual | 65d | 2017-03-01 | 2017-05-31 |  | start no earlier than 2017-03-01 | Stearns; Douglas R; Tiongson; John Eric Z (NONUS); Huang; Lili; Palacherla; Susmitha C | 2080h |
| 97 | 1.1.1.6.1.2 | Detail System-Wide Requirements | manual | 65d | 2017-03-01 | 2017-05-31 |  | start no earlier than 2017-03-01 | Stearns; Douglas R; Tiongson; John Eric Z (NONUS); Huang; Lili | 1560h |
| 98 | 1.1.1.6.1.3 | Create, Review/Update Security Requirements | manual | 65d | 2017-03-01 | 2017-05-31 |  | start no earlier than 2017-03-01 | Stearns; Douglas R; Tiongson; John Eric Z (NONUS); Ingram Michael T; Huang; Lili; Szabo; Brian P; Palacherla; Susmitha C | 520h |
| 99 | 1.1.1.6.1.4 | Create Test Cases | manual | 65d | 2017-03-01 | 2017-05-31 |  | start no earlier than 2017-03-01 | Stearns; Douglas R; Huang; Lili; Palacherla; Susmitha C | 1560h |
| 100 | 1.1.1.6.1.5 | Review Test Activities for Security | manual | 65d | 2017-03-01 | 2017-05-31 |  | start no earlier than 2017-03-01 | Tiongson; John Eric Z (NONUS); Stearns; Douglas R; Ingram Michael T; Szabo; Brian P | 520h |

Notes:
- 73: Text1: [Technical Architecture], [Technical Specification], Design, [Software Implementation], [Software Design], Developer Test, Implementation, Test Log, Build, Design Standard, Application Security Risk & Requirements / Text4: Current Internal And External Security Policies, Standards And Procedures , Application Threat Modeling, Current Internal And External Security Policies, Standards And Procedures , Secure C++ Code, Secure Coding, Secure Java Code, System-Wide Requirements
- 74: Identify the elements and devise the interactions, behavior, relations, and data necessary to realize some functionality. Render the design visually to aid in solving the problem and communicating the solution. / Text2: [Technical Architecture], [Technical Specification], Design Standard, Traceability Matrix, Design / Text3: Design, Traceability Matrix / Text7: Architectural Mechanism, Design Mechanism, Implementation Mechanism, Pattern, Design, Requirements Realization, Software Reuse, Entity-Control-Boundary Pattern, Analyze the Design, Evolve the Design, [Design Guidance]
- 75: A process to define and make key project decisions more objectively and wisely. / Text2: DAR Log Standard, APL Compliant Policy / Text3: Decision Log / Text7: Mind Mapping Best Practices, Team Track Training, TeamTrack Guides
- 76: Identify the security risks and requirements and ensure they are documented appropriately. / Text2: Application Security Risk & Requirements, Application Threat Modeling, Current Internal And External Security Policies, Standards And Procedures / Text3: Application Security Risk & Requirements, Application Threat Modeling, System-Wide Requirements, Use Case Specification, Requirements Model, Acceptable Risks and Safeguards Audit Spreadsheet / Text7: Relevant Stakeholders, Security Risk Assessment Procedure, Dimensions RM Training, Dimensions RM Guides
- 77: Implement one or more tests that enable the validation of the individual implementation elements through execution. / Text2: [Software Implementation], Traceability Matrix, [Software Design] / Text3: Developer Test, Traceability Matrix / Text7: Developer Testing, Test Driven Development
- 78: Implement source code to provide new functionality or fix defects. / Text2: [Software Design], [Technical Specification], Traceability Matrix, Developer Test, [Software Implementation] / Text3: Implementation, Traceability Matrix / Text7: Refactoring, Mapping from Design to Code
- 79: Run tests against the individual implementation elements to verify that their internal structures work as specified. / Text2: Developer Test, [Software Implementation] / Text3: Test Log / Text7: Developer Testing, HP LoadRunner Training, HP LoadRunner Guides, HP Quality Center Training, HP Quality Center Guides, HP Quick Test Pro Training, HP Quick Test Pro Guides
- 80: This task describes how to integrate all changes made by developers into the code base and perform the minimal testing to validate the build. / Text2: [Software Implementation], Developer Test, Test Log / Text3: Build, Test Log / Text7: Change Set, Workspace, Promoting Changes, , Software Release Management Gold Disk SOP
- 81: Support the assessment of the system implementation against its requirements and within its modeled operational environment by identifying and eliminating source code vulnerabilities. / Text2: Current Internal And External Security Policies, Standards And Procedures , Secure C++ Code, Secure Coding, Secure Java Code, Secure C# and VB.NET Development
- 82: Support the assessment of the system implementation against its requirements and within its modeled operational environment by ensuring the test results sufficiently cover all testable security requirements. / Text2: Current Internal And External Security Policies, Standards And Procedures
- 83: Verify that system security features are configured, enabled, tested, and verified. / Text2: Application Security Risk & Requirements, Current Internal And External Security Policies, Standards And Procedures / Text3: [Meeting and Review Records]
- 84: Text1: Test Information Standard, Test Information, [Software Implementation], Current Internal And External Security Policies, Standards And Procedures , Peer Review Results, Change Request / Problem Report, [Project Work], Peer Review Meeting Package / Text4: Peer Review Meeting Package (Optional), Test Plan (optional), Measurement Definitions, System Security Plan
- 85: Run the appropriate tests scripts, analyze results, articulate issues, and communicate test results to the team. / Text2: Test Information Standard, [Software Implementation], Test Information, Test Plan (optional) / Text3: Test Information, Test Plan (optional) / Text7: Maintaining Automated Test Suites, Programming Automated Tests, Test Suite, HP LoadRunner Training, HP LoadRunner Guides, HP Quality Center Training, HP Quality Center Guides, HP Quick Test Pro Training, HP Quick Test Pro Guides
- 86: Support the assessment of the system implementation against its requirements and within its modeled operational environment by ensuring the test results sufficiently cover all testable security requirements. / Text2: Current Internal And External Security Policies, Standards And Procedures
- 87: This process is used to remove defects from artifacts early in the lifecycle / Text2: [Project Work], Peer Review Meeting Package / Text3: Peer Review Results, Peer Review Meeting Package (Optional) / Text7: HP LoadRunner Training, HP LoadRunner Guides, HP Quality Center Training, HP Quality Center Guides, HP Quick Test Pro Training, HP Quick Test Pro Guides
- 88: To verify system works according to requirements, and to officially accept the system. Customer sign-off takes place during this test. / Text2: Test Plan (optional), Test Information / Text3: Test Information, Test Plan (optional) / Text7: HP LoadRunner Training, HP LoadRunner Guides, HP Quality Center Training, HP Quality Center Guides, HP Quick Test Pro Training, HP Quick Test Pro Guides
- 95: Text1: System Wide Requirements Standard, [Technical Specification], Glossary (Optional), System Wide Requirements, Use Case Specification, Requirements Model, Traceability Matrix, Application Security Risk & Requirements, Application Threat Modeling / Text4: Current Internal And External Security Policies, Standards And Procedures , System-Wide Requirements, Use Case Specification, Requirements Model, Acceptable Risks and Safeguards Audit Spreadsheet , Test Information Standard, Test Information
- 96: This task describes how to identify and outline the requirements for the system so that the scope of work may be determined. / Text2: System Wide Requirements Standard, [Customer Requirements], [Technical Specification] / Text3: Glossary (Optional), System Wide Requirements, Use Case Specification, Use Case Survey (Optional), Requirements Model / Text7: Requirements, System-Wide Requirements, Identify and Outline Actors and Use Cases, Developing System-Wide Requirements Specification, Effective Requirement Reviews, Requirements Gathering Techniques, Dimensions RM Training, Dimensions RM Guides
- 97: This task details one or more requirement that does not apply to a specific use case. / Text2: System Wide Requirements Standard, System Wide Requirements, [Customer Requirements], Use Case Specification, Traceability Matrix / Text3: Glossary (Optional), System Wide Requirements, Traceability Matrix / Text7: Effective Requirement Reviews, Developing System-Wide Requirements Specification, Dimensions RM Training, Dimensions RM Guides
- 98: Identify the security risks and requirements and ensure they are documented appropriately. / Text2: Application Security Risk & Requirements, Application Threat Modeling, Current Internal And External Security Policies, Standards And Procedures / Text3: Application Security Risk & Requirements, Application Threat Modeling, System-Wide Requirements, Use Case Specification, Requirements Model, Acceptable Risks and Safeguards Audit Spreadsheet / Text7: Relevant Stakeholders, Security Risk Assessment Procedure, Dimensions RM Training, Dimensions RM Guides
- 99: Develop the test cases and test data for the requirements to be tested. / Text2: Test Information Standard, [Technical Specification], Traceability Matrix, Test Plan (optional), Test Information / Text3: Test Information, Traceability Matrix, Test Plan (optional) / Text7: Test Ideas, HP LoadRunner Training, HP LoadRunner Guides, HP Quality Center Training, HP Quality Center Guides, HP Quick Test Pro Training, HP Quick Test Pro Guides
- 100: Support the assessment of the system implementation against its requirements / Text2: Current Internal And External Security Policies, Standards And Procedures / Text3: [Meeting and Review Records]

| ID | WBS | Task | Type | Duration | Start | Finish | Predecessors | Total slack | Free slack | Constraint | Resources | Work |
| --- | --- | --- | --- | --- | --- | --- | --- | --- | --- | --- | --- | --- |
| 101 | 1.1.1.6.2 | **Develop Solution Increment** |  | 65d | 2017-03-01 | 2017-05-31 |  |  |  |  |  | 7552h |
| 102 | 1.1.1.6.2.1 | Design the Solution | manual | 65d | 2017-03-01 | 2017-05-31 |  |  |  | start no earlier than 2017-03-01 | Stearns; Douglas R; Tiongson; John Eric Z (NONUS); Palacherla; Susmitha C; Huang; Lili | 2080h |
| 103 | 1.1.1.6.2.2 | Decision Analysis and Resolution | manual | 34d | 2017-03-01 | 2017-05-31 |  |  |  | start no earlier than 2017-03-01 | Ingram Michael T; Palacherla; Susmitha C | 272h |
| 104 | 1.1.1.6.2.3 | Create, Review/Update Security Requirements | manual | 65d | 2017-03-01 | 2017-05-31 |  |  |  | start no earlier than 2017-03-01 | Stearns; Douglas R; Tiongson; John Eric Z (NONUS); Ingram Michael T; Szabo; Brian P; Huang; Lili; Palacherla; Susmitha C | 520h |
| 105 | 1.1.1.6.2.4 | Create Developer Tests | manual | 65d | 2017-03-01 | 2017-05-31 |  |  |  | start no earlier than 2017-03-01 | Huang; Lili; Palacherla; Susmitha C | 1040h |
| 106 | 1.1.1.6.2.5 | Develop Solution | manual | 65d | 2017-03-01 | 2017-05-31 |  |  |  | start no earlier than 2017-03-01 | Huang; Lili; Palacherla; Susmitha C | 1040h |
| 107 | 1.1.1.6.2.6 | Run Developer Tests | manual | 65d | 2017-03-01 | 2017-05-31 |  |  |  | start no earlier than 2017-03-01 | Huang; Lili; Palacherla; Susmitha C | 1040h |
| 108 | 1.1.1.6.2.7 | Integrate and Create Build | manual | 34d | 2017-03-01 | 2017-05-31 |  |  |  | start no earlier than 2017-03-01 | Huang; Lili; Palacherla; Susmitha C |  |
| 109 | 1.1.1.6.2.8 | Evaluate Code for Security | manual | 65d | 2017-03-01 | 2017-05-31 |  |  |  | start no earlier than 2017-03-01 | Huang; Lili; Palacherla; Susmitha C; Szabo; Brian P; Information System Security Officer | 520h |
| 110 | 1.1.1.6.2.9 | Evaluate Security Testing | manual | 65d | 2017-03-01 | 2017-05-31 |  |  |  | start no earlier than 2017-03-01 | Huang; Lili; Palacherla; Susmitha C; Szabo; Brian P; Information System Security Officer | 520h |
| 111 | 1.1.1.6.2.10 | Verify Operations Security | manual | 65d | 2017-03-01 | 2017-05-31 |  |  |  | start no earlier than 2017-03-01 | Huang; Lili; Palacherla; Susmitha C; Szabo; Brian P; Information System Security Officer | 520h |
| 112 | 1.1.1.6.3 | **Test Solution** |  | 65d | 2017-03-01 | 2017-05-31 |  |  |  |  |  | 7552h |
| 113 | 1.1.1.6.3.1 | Implement Tests (optional) | manual | 65d | 2017-03-01 | 2017-05-31 |  |  |  | start no earlier than 2017-03-01 | Stearns; Douglas R; Tiongson; John Eric Z (NONUS); Palacherla; Susmitha C; Huang; Lili | 2080h |
| 114 | 1.1.1.6.3.2 | Run Tests | manual | 34d | 2017-03-01 | 2017-05-31 |  |  |  | start no earlier than 2017-03-01 | Stearns; Douglas R | 272h |
| 115 | 1.1.1.6.3.3 | Evaluate Security Testing | manual | 65d | 2017-03-01 | 2017-05-31 |  |  |  | start no earlier than 2017-03-01 | Szabo; Brian P; Stearns; Douglas R | 1040h |
| 116 | 1.1.1.6.3.4 | Peer Review Selected Work Products | manual | 65d | 2017-03-01 | 2017-05-31 |  |  |  | start no earlier than 2017-03-01 | Hinman; David L; Huang; Lili; Palacherla; Susmitha C; Stearns; Douglas R | 2080h |
| 117 | 1.1.1.6.3.5 | Customer Acceptance Testing | manual | 65d | 2017-03-01 | 2017-05-31 |  |  |  | start no earlier than 2017-03-01 | Tiongson; John Eric Z (NONUS); Stearns; Douglas R; Palacherla; Susmitha C; Huang; Lili | 2080h |
| 118 | 1.1.1.7 | **Assess Results** |  | 256.5d? | 2016-06-01 | 2017-06-05 |  | 1720.5d |  |  |  | 2056h |
| 119 | 1.1.1.7.1 | Complete measurement spreadsheet |  | 254d? | 2016-06-01 | 2017-05-31 |  | 1720.5d | 0d | finish no earlier than 2017-05-31 | Ingram Michael T | 2032h |
| 120 | 1.1.1.7.2 | Communicate to stakeholders |  | 2.5d? | 2017-06-01 | 2017-06-05 | 119 | 1720.5d |  |  | Ingram Michael T; Tiongson; John Eric Z (NONUS) | 24h |
| 121 | 1.1.1.8 | **Manage Configurations** |  | 262d | 2016-06-01 | 2017-06-12 |  |  |  |  |  | 12336h |
| 122 | 1.1.1.8.1 | Perform Change Management |  | 254d | 2016-06-01 | 2017-05-31 |  | 1723d |  | finish no earlier than 2017-05-31 | Team Member; Configuration Management Lead; Configuration Control Board | 6096h |
| 123 | 1.1.1.8.2 | **Monthly patches** |  | 239.12d | 2016-06-01 | 2017-05-10 |  |  |  |  |  | 2080h |
| 124 | 1.1.1.8.2.1 | June Patching QA / Prod | manual | 176h | 2016-06-01 | 2016-06-30 |  |  |  |  | Huang; Lili | 176h |
| 125 | 1.1.1.8.2.2 | July Patching QA / Prod | manual | 168h | 2016-07-01 | 2016-07-31 |  |  |  |  | Huang; Lili | 168h |
| 126 | 1.1.1.8.2.3 | August Patching QA / Prod | manual | 184h | 2016-08-01 | 2016-08-31 |  |  |  |  | Huang; Lili | 184h |
| 127 | 1.1.1.8.2.4 | Sept Patching QA / Prod | manual | 168h | 2016-09-01 | 2016-09-30 |  |  |  |  | Huang; Lili | 168h |
| 128 | 1.1.1.8.2.5 | Oct Patching QA / Prod | manual | 176h | 2016-10-01 | 2016-10-31 |  |  |  |  | Huang; Lili | 176h |
| 129 | 1.1.1.8.2.6 | Nov Patching QA / Prod | manual | 160h | 2016-11-01 | 2016-11-30 |  |  |  |  | Huang; Lili | 160h |
| 130 | 1.1.1.8.2.7 | Dec Patching QA / Prod | manual | 176h | 2016-12-01 | 2016-12-31 |  |  |  |  | Huang; Lili | 176h |
| 131 | 1.1.1.8.2.8 | Jan Patching QA / Prod | manual | 176h | 2017-01-01 | 2017-01-31 |  |  |  |  | Huang; Lili | 176h |
| 132 | 1.1.1.8.2.9 | Feb Patching QA / Prod | manual | 160h | 2017-02-01 | 2017-02-28 |  |  |  |  | Huang; Lili | 160h |
| 133 | 1.1.1.8.2.10 | March Patching QA / Prod | manual | 184h | 2017-03-01 | 2017-03-31 |  |  |  |  | Huang; Lili | 184h |
| 134 | 1.1.1.8.2.11 | April Patching QA / Prod | manual | 176h | 2017-04-01 | 2017-04-30 |  |  |  |  | Huang; Lili | 176h |
| 135 | 1.1.1.8.2.12 | May Patching QA / Prod | manual | 176h | 2017-05-01 | 2017-05-31 |  |  |  |  | Huang; Lili | 176h |

Notes:
- 101: Text1: [Technical Architecture], [Technical Specification], Design, [Software Implementation], [Software Design], Developer Test, Implementation, Test Log, Build, Design Standard, Application Security Risk & Requirements / Text4: Current Internal And External Security Policies, Standards And Procedures , Application Threat Modeling, Current Internal And External Security Policies, Standards And Procedures , Secure C++ Code, Secure Coding, Secure Java Code, System-Wide Requirements
- 102: Identify the elements and devise the interactions, behavior, relations, and data necessary to realize some functionality. Render the design visually to aid in solving the problem and communicating the solution. / Text2: [Technical Architecture], [Technical Specification], Design Standard, Traceability Matrix, Design / Text3: Design, Traceability Matrix / Text7: Architectural Mechanism, Design Mechanism, Implementation Mechanism, Pattern, Design, Requirements Realization, Software Reuse, Entity-Control-Boundary Pattern, Analyze the Design, Evolve the Design, [Design Guidance]
- 103: A process to define and make key project decisions more objectively and wisely. / Text2: DAR Log Standard, APL Compliant Policy / Text3: Decision Log / Text7: Mind Mapping Best Practices, Team Track Training, TeamTrack Guides
- 104: Identify the security risks and requirements and ensure they are documented appropriately. / Text2: Application Security Risk & Requirements, Application Threat Modeling, Current Internal And External Security Policies, Standards And Procedures / Text3: Application Security Risk & Requirements, Application Threat Modeling, System-Wide Requirements, Use Case Specification, Requirements Model, Acceptable Risks and Safeguards Audit Spreadsheet / Text7: Relevant Stakeholders, Security Risk Assessment Procedure, Dimensions RM Training, Dimensions RM Guides
- 105: Implement one or more tests that enable the validation of the individual implementation elements through execution. / Text2: [Software Implementation], Traceability Matrix, [Software Design] / Text3: Developer Test, Traceability Matrix / Text7: Developer Testing, Test Driven Development
- 106: Implement source code to provide new functionality or fix defects. / Text2: [Software Design], [Technical Specification], Traceability Matrix, Developer Test, [Software Implementation] / Text3: Implementation, Traceability Matrix / Text7: Refactoring, Mapping from Design to Code
- 107: Run tests against the individual implementation elements to verify that their internal structures work as specified. / Text2: Developer Test, [Software Implementation] / Text3: Test Log / Text7: Developer Testing, HP LoadRunner Training, HP LoadRunner Guides, HP Quality Center Training, HP Quality Center Guides, HP Quick Test Pro Training, HP Quick Test Pro Guides
- 108: This task describes how to integrate all changes made by developers into the code base and perform the minimal testing to validate the build. / Text2: [Software Implementation], Developer Test, Test Log / Text3: Build, Test Log / Text7: Change Set, Workspace, Promoting Changes, , Software Release Management Gold Disk SOP
- 109: Support the assessment of the system implementation against its requirements and within its modeled operational environment by identifying and eliminating source code vulnerabilities. / Text2: Current Internal And External Security Policies, Standards And Procedures , Secure C++ Code, Secure Coding, Secure Java Code, Secure C# and VB.NET Development
- 110: Support the assessment of the system implementation against its requirements and within its modeled operational environment by ensuring the test results sufficiently cover all testable security requirements. / Text2: Current Internal And External Security Policies, Standards And Procedures
- 111: Verify that system security features are configured, enabled, tested, and verified. / Text2: Application Security Risk & Requirements, Current Internal And External Security Policies, Standards And Procedures / Text3: [Meeting and Review Records]
- 112: Text1: Test Information Standard, Test Information, [Software Implementation], Current Internal And External Security Policies, Standards And Procedures , Peer Review Results, Change Request / Problem Report, [Project Work], Peer Review Meeting Package / Text4: Peer Review Meeting Package (Optional), Test Plan (optional), Measurement Definitions, System Security Plan
- 113: Implement Test Scripts to validate a Build of the solution. Organize Test Scripts into suites, and collaborate to ensure appropriate depth and breadth of test feedback. / Text2: Test Information Standard, Test Information, Test Plan (optional), [Software Implementation] / Text3: Test Information, Test Plan (optional) / Text7: Test Ideas, Maintaining Automated Test Suites, Programming Automated Tests, Test Ideas, HP LoadRunner Training, HP LoadRunner Guides, HP Quality Center Training, HP Quality Center Guides, HP Quick Test Pro Training, HP Quick Test Pro Guides
- 114: Run the appropriate tests scripts, analyze results, articulate issues, and communicate test results to the team. / Text2: Test Information Standard, [Software Implementation], Test Information, Test Plan (optional) / Text3: Test Information, Test Plan (optional) / Text7: Maintaining Automated Test Suites, Programming Automated Tests, Test Suite, HP LoadRunner Training, HP LoadRunner Guides, HP Quality Center Training, HP Quality Center Guides, HP Quick Test Pro Training, HP Quick Test Pro Guides
- 115: Support the assessment of the system implementation against its requirements and within its modeled operational environment by ensuring the test results sufficiently cover all testable security requirements. / Text2: Current Internal And External Security Policies, Standards And Procedures
- 116: This process is used to remove defects from artifacts early in the lifecycle / Text2: [Project Work], Peer Review Meeting Package / Text3: Peer Review Results, Peer Review Meeting Package (Optional) / Text7: HP LoadRunner Training, HP LoadRunner Guides, HP Quality Center Training, HP Quality Center Guides, HP Quick Test Pro Training, HP Quick Test Pro Guides
- 117: To verify system works according to requirements, and to officially accept the system. Customer sign-off takes place during this test. / Text2: Test Plan (optional), Test Information / Text3: Test Information, Test Plan (optional) / Text7: HP LoadRunner Training, HP LoadRunner Guides, HP Quality Center Training, HP Quality Center Guides, HP Quick Test Pro Training, HP Quick Test Pro Guides
- 121: Text1: Configuration Control Standard, Baseline Package Standard, Change Request / Problem Report, Baseline Package, Project Plan, [Measurements], [Meeting and Review Records], Risk Register, Work Items List, Impact Assessment Standard, DAR Log Standard / Text4: Decision Log, Baseline Audit Plan & Report, APL Compliant Policy, Measurement Definitions, System Security Plan
- 122: Text2: Configuration Control Standard, Impact Assessment Standard, Change Request / Problem Report / Text3: Change Request / Problem Report / Text7: Subversion Training, Subversion Guides, Team Track Training, TeamTrack Guides, Tracker Training, Tracker Guides, Version Manager Training, Version Manager Guides

| ID | WBS | Task | Type | Duration | Start | Finish | Resources | Work |
| --- | --- | --- | --- | --- | --- | --- | --- | --- |
| 136 | 1.1.1.8.3 | **Monthly Password Changes** |  | 239.12d | 2016-06-01 | 2017-05-10 |  | 4160h |
| 137 | 1.1.1.8.3.1 | June QA / Prod PW | manual | 176h | 2016-06-01 | 2016-06-30 | Palacherla; Susmitha C | 176h |
| 138 | 1.1.1.8.3.2 | July QA / Prod PW | manual | 168h | 2016-07-01 | 2016-07-31 | Palacherla; Susmitha C | 168h |
| 139 | 1.1.1.8.3.3 | Aug QA / Prod PW | manual | 184h | 2016-08-01 | 2016-08-31 | Palacherla; Susmitha C | 184h |
| 140 | 1.1.1.8.3.4 | Sept QA / Prod PW | manual | 168h | 2016-09-01 | 2016-09-30 | Palacherla; Susmitha C | 168h |
| 141 | 1.1.1.8.3.5 | Oct QA / Prod PW | manual | 176h | 2016-10-01 | 2016-10-31 | Palacherla; Susmitha C | 176h |
| 142 | 1.1.1.8.3.6 | Nov QA / Prod PW | manual | 160h | 2016-11-01 | 2016-11-30 | Palacherla; Susmitha C | 160h |
| 143 | 1.1.1.8.3.7 | Dec QA / Prod PW | manual | 176h | 2016-12-01 | 2016-12-31 | Palacherla; Susmitha C | 176h |
| 144 | 1.1.1.8.3.8 | Jan QA / Prod PW | manual | 176h | 2017-01-01 | 2017-01-31 | Palacherla; Susmitha C | 176h |
| 145 | 1.1.1.8.3.9 | Feb QA / Prod PW | manual | 160h | 2017-02-01 | 2017-02-28 | Palacherla; Susmitha C | 160h |
| 146 | 1.1.1.8.3.10 | March QA / Prod PW | manual | 184h | 2017-03-01 | 2017-03-31 | Palacherla; Susmitha C | 184h |
| 147 | 1.1.1.8.3.11 | April QA / Prod PW | manual | 176h | 2017-04-01 | 2017-04-30 | Palacherla; Susmitha C | 176h |
| 148 | 1.1.1.8.3.12 | May QA / Prod PW | manual | 176h | 2017-05-01 | 2017-05-31 | Palacherla; Susmitha C | 176h |
| 149 | 1.1.1.8.3.13 | **Monthly Server Scans** |  | 239.12d | 2016-06-01 | 2017-05-10 |  | 2080h |
| 150 | 1.1.1.8.3.13.1 | June Server Scans / Review / Remediation | manual | 176h | 2016-06-01 | 2016-06-30 | Palacherla; Susmitha C | 176h |
| 151 | 1.1.1.8.3.13.2 | July Server Scans / Review / Remediation | manual | 168h | 2016-07-01 | 2016-07-31 | Palacherla; Susmitha C | 168h |
| 152 | 1.1.1.8.3.13.3 | Aug Server Scans / Review / Remediation | manual | 184h | 2016-08-01 | 2016-08-31 | Palacherla; Susmitha C | 184h |
| 153 | 1.1.1.8.3.13.4 | Sept Server Scans / Review / Remediation | manual | 168h | 2016-09-01 | 2016-09-30 | Palacherla; Susmitha C | 168h |
| 154 | 1.1.1.8.3.13.5 | Oct Server Scans / Review / Remediation | manual | 176h | 2016-10-01 | 2016-10-31 | Palacherla; Susmitha C | 176h |
| 155 | 1.1.1.8.3.13.6 | Nov Server Scans / Review / Remediation | manual | 160h | 2016-11-01 | 2016-11-30 | Palacherla; Susmitha C | 160h |
| 156 | 1.1.1.8.3.13.7 | Dec Server Scans / Review / Remediation | manual | 176h | 2016-12-01 | 2016-12-31 | Palacherla; Susmitha C | 176h |
| 157 | 1.1.1.8.3.13.8 | Jan Server Scans / Review / Remediation | manual | 176h | 2017-01-01 | 2017-01-31 | Palacherla; Susmitha C | 176h |
| 158 | 1.1.1.8.3.13.9 | Feb Server Scans / Review / Remediation | manual | 160h | 2017-02-01 | 2017-02-28 | Palacherla; Susmitha C | 160h |
| 159 | 1.1.1.8.3.13.10 | March Server Scans / Review / Remediation | manual | 184h | 2017-03-01 | 2017-03-31 | Palacherla; Susmitha C | 184h |
| 160 | 1.1.1.8.3.13.11 | April Server Scans / Review / Remediation | manual | 176h | 2017-04-01 | 2017-04-30 | Palacherla; Susmitha C | 176h |
| 161 | 1.1.1.8.3.13.12 | May Server Scans / Review / Remediation | manual | 176h | 2017-05-01 | 2017-05-31 | Palacherla; Susmitha C | 176h |
